# ReservaTuFuturo

How a schedule from MS Project changed from version to version. A marks actual dates.

## Version 1 (data date 2024-11-24, saved 2024-11-24)

Note of the change: feat: upload MS Project file to ensure correct time & cost project tracking

| ID | WBS | Task | Duration | Start | Finish | Predecessors | Complete | Total float | Constraint |
| --- | --- | --- | --- | --- | --- | --- | --- | --- | --- |
| 1 | 1 | **Proyecto** | 51d | 2024-10-02 09:00 A | 2024-12-12 09:00 |  | 39% | 0d |  |
| 2 | 1.1 | **1. Inicio** | 16.38d | 2024-10-02 09:00 A | 2024-10-24 12:00 |  | 99% | 0d |  |
| 3 |  | Inicio del Proyecto | 0d | 2024-10-02 09:00 A | 2024-10-02 09:00 A |  | 100% |  |  |
| 4 | 1.1.2 | **1.1. Carpeta de Inicio** | 0.38d | 2024-10-24 09:00 A | 2024-10-24 12:00 A |  | 100% |  |  |
| 5 |  | Elaboración del Acta de Constitución | 3h | 2024-10-24 09:00 A | 2024-10-24 12:00 A |  | 100% |  |  |
| 6 |  | Elaboración del Registro de Interesados | 2h | 2024-10-24 09:00 A | 2024-10-24 11:00 A |  | 100% |  |  |
| 7 |  | Elaboración del Registro de Supuestos | 2h | 2024-10-24 09:00 A | 2024-10-24 11:00 A |  | 100% |  |  |
| 8 | 1.2 | **2. Planificación** | 10.12d | 2024-10-24 09:00 A | 2024-11-07 10:00 A |  | 100% |  |  |
| 9 | 1.2.1 | **2.1. Carpeta Planes** | 8d | 2024-10-24 09:00 A | 2024-11-04 19:00 |  | 100% |  |  |
| 10 |  | Realización del Plan de Dirección del Proyecto | 4h | 2024-10-24 15:00 A | 2024-10-24 19:00 A | 5, 6, 7 | 50% |  |  |
| 11 |  | Elaboración del Plan de Gestión de Requisitos | 2h | 2024-10-24 09:00 A | 2024-10-25 10:00 A | 10 | 100% |  |  |
| 12 |  | Elaboración del Plan de Gestión del Alcance | 4h | 2024-10-24 09:00 A | 2024-10-25 11:00 A | 10 | 100% |  |  |
| 13 |  | Elaboración del Plan de Gestión del Cronograma | 2h | 2024-10-25 09:00 A | 2024-10-25 11:00 A | 10 | 100% |  |  |
| 14 |  | Elaboración del Plan de Gestión de Costes | 3h | 2024-10-25 09:00 A | 2024-10-25 12:00 A | 10 | 100% |  |  |
| 15 |  | Elaboración del Plan de Gestión de Calidad | 1h | 2024-10-25 09:00 A | 2024-10-25 10:00 A | 10 | 100% |  |  |
| 16 |  | Elaboración del Plan de Gestión de Recursos | 5h | 2024-10-25 09:00 A | 2024-10-25 16:00 A | 10 | 100% |  |  |
| 17 |  | Elaboración del Plan de Gestión de Comunicaciones | 1h | 2024-11-04 09:00 A | 2024-11-04 10:00 A | 10 | 100% |  |  |
| 18 |  | Elaboración del Plan de Gestión de Riesgos | 2h | 2024-10-25 09:00 A | 2024-10-25 11:00 A | 10 | 100% |  |  |
| 19 |  | Elaboración del Plan de Gestión de Adquisiciones | 4h | 2024-10-25 09:00 A | 2024-10-25 13:00 A | 10 | 100% |  |  |
| 20 |  | Elaboración del Plan de Gestión de Cambios | 3h | 2024-10-25 09:00 A | 2024-10-25 12:00 A | 10 | 100% |  |  |
| 21 |  | Elaboración del Plan de Gestión de la Configuración | 3h | 2024-11-04 09:00 A | 2024-11-04 12:00 A | 10 | 100% |  |  |
| 22 | 1.2.2 | **2.2. Carpeta Líneas Base** | 8.62d | 2024-10-25 15:00 A | 2024-11-07 10:00 A |  | 100% |  |  |
| 23 |  | Elaboración del Enunciado del Alcance | 5h | 2024-10-25 15:00 A | 2024-10-28 10:00 A | 12 | 100% |  |  |
| 24 |  | Elaboración de la EDT | 6h | 2024-10-28 09:00 A | 2024-10-28 17:00 A | 23 | 100% |  |  |
| 25 |  | Elaboración del Diccionario de la EDT | 13h | 2024-11-05 09:00 A | 2024-11-06 16:00 A | 23, 24, 31, 34 | 100% |  |  |
| 26 |  | Elaboración de la Lista de Hitos | 1h | 2024-10-28 09:00 A | 2024-10-28 10:00 A | 23 | 100% |  |  |
| 27 |  | Entrenamiento para MS Project | 4h | 2024-10-28 09:00 A | 2024-10-28 13:00 A |  | 100% |  |  |
| 28 |  | Elaboración del Cronograma | 7h | 2024-11-06 11:00 A | 2024-11-07 10:00 A | 13, 24, 25, 31, 34 | 100% |  |  |
| 29 |  | Elaboración del Presupuesto | 4h | 2024-10-30 09:00 A | 2024-10-30 13:00 A | 16, 18, 19, 20, 14 | 100% |  |  |
| 30 | 1.2.3 | **2.3. Carpeta Trazabilidad** | 1.25d | 2024-11-04 09:00 A | 2024-11-05 11:00 A |  | 100% |  |  |
| 31 |  | Elaboración de la Matriz de Trazabilidad de Requisitos | 6h | 2024-11-04 15:00 A | 2024-11-05 11:00 A | 18, 34 | 100% |  |  |
| 32 |  | Elaboración Matriz de Asignación de Responsabilidades | 2h | 2024-11-04 09:00 A | 2024-11-04 11:00 A |  | 100% |  | start no earlier than 2024-11-04 09:00 |
| 33 | 1.2.4 | **2.4. Carpeta Registros** | 1d | 2024-11-04 09:00 A | 2024-11-04 19:00 A |  | 100% |  |  |
| 34 |  | Elaboración del Registro de Requisitos | 8h | 2024-11-04 09:00 A | 2024-11-04 19:00 A | 11 | 100% |  |  |
| 35 |  | Elaboración del Registro de Riesgos | 2h | 2024-11-04 09:00 A | 2024-11-04 11:00 A | 18 | 100% |  |  |
| 36 |  | Entrega Plan de Dirección de Proyecto | 0d | 2024-11-08 19:00 | 2024-11-08 19:00 | 2, 8 |  | 16.5d | finish no earlier than 2024-11-08 19:00 |
| 37 | 1.4 | **Desarrollo** | 15.5d | 2024-11-11 09:00 A | 2024-12-02 13:00 |  | 37% | 1.5d |  |
| 38 |  | Inicio Iteración 1 | 0d | 2024-11-11 09:00 A | 2024-11-11 09:00 A |  | 100% |  |  |
| 39 | 1.4.2 | **3.1. Iteración 1** | 6d | 2024-11-11 09:00 A | 2024-11-18 19:00 |  | 100% |  |  |
| 40 | 1.4.2.1 | **3.1.1. Adquisición de Recursos** | 1.5d | 2024-11-11 09:00 A | 2024-11-12 13:00 A |  | 100% |  |  |
| 41 |  | Preparación del entorno de desarrollo | 2h | 2024-11-11 09:00 A | 2024-11-11 11:00 A | 36 | 100% |  |  |
| 42 |  | Preparación de la BBDD | 3h | 2024-11-11 09:00 A | 2024-11-11 12:00 A | 36 | 100% |  |  |
| 43 |  | Entrenamiento con Django | 4h | 2024-11-12 09:00 A | 2024-11-12 13:00 A |  | 100% |  | start no earlier than 2024-11-12 09:00 |
| 44 |  | Configuración PaaS y CI/CD | 2h | 2024-11-11 09:00 A | 2024-11-11 11:00 A | 36 | 100% |  |  |
| 45 | 1.4.2.2 | **3.1.2. Gestión de Usuarios** | 2.38d | 2024-11-12 17:00 A | 2024-11-15 10:00 A |  | 100% |  |  |
| 46 |  | Registro de usuario (R5, R19) | 4h | 2024-11-12 17:00 A | 2024-11-13 11:00 A | 41, 42, 43, 44 | 100% |  |  |
| 47 |  | Inicio de sesión (R7) | 2h | 2024-11-12 17:00 A | 2024-11-12 19:00 A | 41, 42, 43, 44 | 100% |  |  |
| 48 |  | Edición de usuario (R6, R19) | 1h | 2024-11-14 09:00 A | 2024-11-14 10:00 A | 41, 42, 43, 44 | 100% |  | start no earlier than 2024-11-14 09:00 |
| 49 |  | Vista de los datos de la academia (R29) | 1h | 2024-11-15 09:00 A | 2024-11-15 10:00 A | 41, 42, 43, 44 | 100% |  | start no earlier than 2024-11-15 09:00 |
| 50 |  | Inicio Iteración 2 | 0d | 2024-11-15 09:00 A | 2024-11-15 09:00 A |  | 100% |  |  |
| 51 | 1.4.3 | **3.2. Iteración 2** | 4.12d | 2024-11-19 09:00 A | 2024-11-25 10:00 A | 39 | 100% |  |  |
| 52 | 1.4.3.1 | **3.2.1. Gestión de Cursos** | 2.12d | 2024-11-19 09:00 A | 2024-11-21 10:00 A | 39 | 100% |  |  |
| 53 |  | Registrar nuevo curso(R20) | 3h | 2024-11-19 09:00 A | 2024-11-19 12:00 A | 39 | 100% |  |  |
| 54 |  | Modificación del curso(R28) | 1h | 2024-11-19 09:00 A | 2024-11-19 10:00 A | 39 | 100% |  |  |
| 55 |  | Listado de cursos ofertados (R1, R10, R11, R26) | 2h | 2024-11-19 09:00 A | 2024-11-19 11:00 A | 39 | 100% |  |  |
| 56 |  | Ver detalles de un curso (R13, R27, R38) | 1h | 2024-11-19 09:00 A | 2024-11-19 10:00 A | 39 | 100% |  |  |
| 57 |  | Listado de cursos reservados (R25) | 1h | 2024-11-21 09:00 A | 2024-11-21 10:00 A |  | 100% |  | start no earlier than 2024-11-21 09:00 |
| 58 | 1.4.3.2 | **3.2.2. Gestión de Reservas** | 2d | 2024-11-21 10:00 A | 2024-11-25 10:00 A |  | 100% |  |  |
| 59 |  | Reserva de un curso (R14) | 4h | 2024-11-21 17:00 A | 2024-11-22 11:00 A | 52 | 100% |  |  |
| 60 |  | Implementación de pago (R15, R31, R34, R35) | 2h | 2024-11-21 17:00 A | 2024-11-21 19:00 A | 52 | 100% |  |  |
| 61 |  | Lista de clientes del curso (R39) | 1h | 2024-11-21 10:00 A | 2024-11-21 11:00 A | 52 | 100% |  |  |
| 62 |  | Implementación de la lista de cursos reservados por el cliente (R30) | 2h | 2024-11-21 10:00 A | 2024-11-21 12:00 A | 52 | 100% |  |  |
| 63 |  | Implementación del carrito de compra para cursos (R33) | 1h | 2024-11-25 09:00 A | 2024-11-25 10:00 A |  | 100% |  | start no earlier than 2024-11-25 09:00 |
| 64 |  | Inicio Iteración 3 | 0d | 2024-11-21 10:00 A | 2024-11-21 10:00 A |  | 100% |  |  |
| 65 | 1.4.4 | **3.3. Iteración 3** | 6d | 2024-11-25 09:00 | 2024-12-01 19:00 | 51 |  |  |  |
| 66 | 1.4.4.1 | **3.3.1. Desarrollo de Pruebas** | 1.88d | 2024-11-25 10:00 | 2024-11-26 19:00 |  |  | 4.5d |  |
| 67 |  | Pruebas de usuario | 8h | 2024-11-26 09:00 | 2024-11-26 19:00 |  |  | 4.5d | start no earlier than 2024-11-26 09:00 |
| 68 |  | Pruebas de curso | 8h | 2024-11-26 09:00 | 2024-11-26 19:00 |  |  | 4.5d | start no earlier than 2024-11-26 09:00 |
| 69 |  | Pruebas de reserva | 8h | 2024-11-25 10:00 | 2024-11-26 10:00 | 58 |  | 5.38d |  |
| 70 | 1.4.4.2 | **3.3.2. Gestión de Notificaciones** | 2.88d | 2024-11-25 10:00 | 2024-11-27 19:00 |  |  | 3.5d |  |

| ID | WBS | Task | Duration | Start | Finish | Predecessors | Total float | Constraint |
| --- | --- | --- | --- | --- | --- | --- | --- | --- |
| 71 |  | Notificación del curso adquirido (R16) | 8h | 2024-11-25 10:00 | 2024-11-26 10:00 | 51 | 5.38d |  |
| 72 |  | Notificación de revocación del acceso al curso (R36) | 8h | 2024-11-27 09:00 | 2024-11-27 19:00 |  | 3.5d | start no earlier than 2024-11-27 09:00 |
| 73 |  | Notificación de revocación del acceso al sitio web (R37) | 8h | 2024-11-27 09:00 | 2024-11-27 19:00 |  | 3.5d | start no earlier than 2024-11-27 09:00 |
| 74 | 1.4.5 | **3.4. Carpeta Ejecución** | 0.5d | 2024-12-02 09:00 | 2024-12-02 13:00 |  | 1.5d |  |
| 75 |  | Elaboración de registro de cambios | 4h | 2024-12-02 09:00 | 2024-12-02 13:00 | 36, 65 | 1.5d | finish no earlier than 2024-12-01 19:00 |
| 76 |  | Elaboración de registro de incidencias | 4h | 2024-12-02 09:00 | 2024-12-02 13:00 | 36, 65 | 1.5d | finish no earlier than 2024-12-01 19:00 |
| 77 |  | Elaboración de registro de decisiones | 4h | 2024-12-02 09:00 | 2024-12-02 13:00 | 36, 65 | 1.5d | finish no earlier than 2024-12-01 19:00 |
| 78 |  | Elaboración de documentación de los sprints | 4h | 2024-12-02 09:00 | 2024-12-02 13:00 | 36, 65 | 1.5d | finish no earlier than 2024-12-01 19:00 |
| 79 | 1.5 | **4. Seguimiento y Control** | 3.5d | 2024-12-02 15:00 | 2024-12-05 19:00 | 37 | 1.5d |  |
| 80 | 1.5.1 | **4.1. Monitoreo del Progreso del Proyecto** | 2.5d | 2024-12-02 15:00 | 2024-12-04 19:00 | 37 | 2d |  |
| 81 |  | Recolección de datos | 20h | 2024-12-02 15:00 | 2024-12-04 19:00 | 37 | 2d |  |
| 82 |  | Elaboración de informes de desempeño | 20h | 2024-12-02 15:00 | 2024-12-04 19:00 | 37 | 2d |  |
| 83 |  | Análisis de desviaciones | 20h | 2024-12-02 15:00 | 2024-12-04 19:00 | 37 | 2d |  |
| 84 |  | Elaboración de informes de seguimiento | 20h | 2024-12-02 15:00 | 2024-12-04 19:00 | 37 | 2d |  |
| 85 | 1.5.2 | **4.2. Control de Cambios y Gestión de la Calidad** | 2.5d | 2024-12-02 15:00 | 2024-12-04 19:00 | 37 | 1.5d |  |
| 86 |  | Actualización del plan de dirección | 8h | 2024-12-02 15:00 | 2024-12-03 13:00 | 37 | 5.5d |  |
| 87 |  | Actualización de la documentación del proyecto | 8h | 2024-12-02 15:00 | 2024-12-03 13:00 | 37 | 5.5d |  |
| 88 |  | Verificación de entregables | 8h | 2024-12-04 09:00 | 2024-12-04 19:00 | 37 |  |  |
| 89 |  | Implementación de cambios | 8h | 2024-12-04 09:00 | 2024-12-04 19:00 | 37 |  |  |
| 90 | 1.5.3 | **4.3. Reportes de Estado y Gestión de Riesgos** | 1d | 2024-12-05 09:00 | 2024-12-05 19:00 | 37 | 0d |  |
| 91 |  | Monitorización de los riesgos identificados | 8h | 2024-12-05 09:00 | 2024-12-05 19:00 | 37 |  |  |
| 92 |  | Elaboración de informes de estado | 8h | 2024-12-05 09:00 | 2024-12-05 19:00 | 37 |  |  |
| 93 |  | Aplicación completamente testeada | 0d | 2024-12-05 09:00 | 2024-12-05 09:00 |  |  |  |
| 94 |  | Validación de la calidad | 0d | 2024-12-05 09:00 | 2024-12-05 09:00 |  |  |  |
| 95 | 1.6 | **5. Cierre** | 2d | 2024-12-10 09:00 | 2024-12-12 09:00 | 79 | 0d |  |
| 96 | 1.6.1 | **5.1. Entrega del Proyecto** | 1d | 2024-12-10 09:00 | 2024-12-10 19:00 |  | 1d |  |
| 97 |  | Presentación del Proyecto | 4h | 2024-12-10 09:00 | 2024-12-10 13:00 | 37, 79 | 1.5d |  |
| 98 |  | Elaboración del Manual de Instrucciones | 8h | 2024-12-10 09:00 | 2024-12-10 19:00 | 37, 79 | 1d |  |
| 99 | 1.6.2 | **5.2. Cierre del Proyecto** | 0.5d | 2024-12-10 09:00 | 2024-12-10 13:00 |  | 1.5d |  |
| 100 |  | Elaboración de Informe de Cierre | 4h | 2024-12-10 09:00 | 2024-12-10 13:00 | 37, 79 | 1.5d | start no earlier than 2024-12-10 09:00 |
| 101 |  | Entrega del Proyecto | 0d | 2024-12-10 19:00 | 2024-12-10 19:00 | 98, 100 | 1d |  |
| 102 |  | Presentación | 0d | 2024-12-12 09:00 | 2024-12-12 09:00 | 97, 98, 100 |  |  |

## Version 2 (data date 2024-11-24, saved 2024-11-30)

Note of the change: docs: Upload latest version of MS Projects for S2 & S3

Last finish stays 2024-12-12.

Changed:

| ID | Task | Finish | Duration | Complete | Other |
| --- | --- | --- | --- | --- | --- |
| 1 | **Proyecto** |  |  | 39% → 40% |  |
| 37 | **Desarrollo** |  |  | 37% → 40% |  |
| 55 | Listado de cursos ofertados (R1, R10, R11, R26) | 2024-11-19 11:00 A → 2024-11-19 13:00 A | 2h → 4h |  | resources Programador - 1; Computador - 3 [25%] → Programador - 1; Computador - 3 [125%] |
| 56 | Ver detalles de un curso (R13, R27, R38) | 2024-11-19 10:00 A → 2024-11-19 13:00 A | 1h → 4h |  | resources Programador - 2; Computador - 4 → Programador - 2; Computador - 4 [200%] |
